# ESD 改版

Schedule from a web Gantt chart, 2025-10-28 to 2025-11-11.
Every day is a working day

## Schedule

| ID | WBS | Task | Duration | Start | Finish |
| --- | --- | --- | --- | --- | --- |
| 2 | 1 | Kickoff | 1d | 2025-10-28 | 2025-10-28 |
| 3 | 2 | Mask in | 12d | 2025-10-30 | 2025-11-10 |
| 4 | 3 | Qual. lot | 1d | 2025-10-28 | 2025-10-28 |
| 5 | 4 | WAFER PROCESS | 1d | 2025-11-11 | 2025-11-11 |
